# Variant_6

How a schedule from MS Project changed from version to version. A marks actual dates.

## Version 1 (saved 2023-04-23, file resource sheet.mpp)

| ID | WBS | Task | Duration | Start | Finish | Predecessors | Total float |
| --- | --- | --- | --- | --- | --- | --- | --- |
| 1 | 1 | **ERP_Project_Team_13** | 224d | 2023-03-30 | 2024-02-06 |  | 0d |
| 2 | 1.1 | **Project Initiation** | 48d | 2023-03-30 | 2023-06-05 |  |  |
| 3 |  | Develop project charter | 5d | 2023-03-30 | 2023-04-05 |  | 100d |
| 4 |  | Develop Statement Of Work | 7d | 2023-04-06 | 2023-04-14 | 3 | 100d |
| 5 |  | Develop preliminary scope development | 3d | 2023-04-17 | 2023-04-19 | 4 | 100d |
| 6 |  | Develop preliminary architectural model | 4d | 2023-04-20 | 2023-04-25 | 3, 5 | 100d |
| 7 |  | Project initiation complete | 0d | 2023-04-25 | 2023-04-25 | 3, 4, 5, 6 | 100d |
| 8 | 1.2 | **Project plan** | 97d | 2023-06-06 | 2023-10-18 |  |  |
| 9 |  | Develop scope management plan | 2d | 2023-06-06 | 2023-06-07 | 2 | 71d |
| 10 |  | Develop change management plan | 3d | 2023-06-08 | 2023-06-12 | 9 | 79d |
| 11 |  | Develop initial descriptive budget | 11d | 2023-06-08 | 2023-06-22 | 9 | 71d |
| 12 |  | Develop schedule | 3d | 2023-06-23 | 2023-06-27 | 10, 11 | 71d |
| 13 |  | Develop quality management plan | 3d | 2023-06-28 | 2023-06-30 | 12 | 71d |
| 14 |  | Develop human resource plan | 4d | 2023-07-03 | 2023-07-06 | 13 | 71d |
| 15 |  | Develop risk management plan | 3d | 2023-07-07 | 2023-07-11 | 14 | 71d |
| 16 |  | Project plan complete | 0d | 2023-07-11 | 2023-07-11 | 9, 10, 11, 12, 13, 14, 15 | 71d |
| 17 | 1.3 | **Project Execution** | 78d | 2023-10-19 | 2024-02-05 |  | 0d |
| 18 | 1.3.1 | **Release 1** | 52d | 2023-10-19 | 2023-12-29 |  | 0d |
| 19 |  | Analysis phase | 16d | 2023-10-19 | 2023-11-09 | 8 | 0d |
| 20 |  | Design phase | 13d | 2023-11-10 | 2023-11-28 | 19 | 0d |
| 21 |  | Construction phase | 10d | 2023-11-29 | 2023-12-12 | 20 | 0d |
| 22 |  | Validation phase | 10d | 2023-12-13 | 2023-12-26 | 21 | 0d |
| 23 |  | Deployment phase | 2d | 2023-12-27 | 2023-12-28 | 22 | 0d |
| 24 |  | Closeout | 1d | 2023-12-29 | 2023-12-29 | 23 | 0d |
| 25 |  | Release 1 Complete | 0d | 2023-12-29 | 2023-12-29 | 24 | 0d |
| 26 | 1.3.2 | **Release 2** | 26d | 2024-01-01 | 2024-02-05 |  | 0d |
| 27 |  | Analysis phase | 8d | 2024-01-01 | 2024-01-10 | 18 | 0d |
| 28 |  | Design phase | 6d | 2024-01-11 | 2024-01-18 | 27 | 0d |
| 29 |  | Construction phase | 5d | 2024-01-19 | 2024-01-25 | 28 | 0d |
| 30 |  | Validation phase | 5d | 2024-01-26 | 2024-02-01 | 29 | 0d |
| 31 |  | Deployment phase | 1d | 2024-02-02 | 2024-02-02 | 30 | 0d |
| 32 |  | Closeout | 1d | 2024-02-05 | 2024-02-05 | 31 | 0d |
| 33 |  | Release 2 Complete | 0d | 2024-02-05 | 2024-02-05 | 32 | 0d |
| 34 |  | Execution complete | 0d | 2024-02-05 | 2024-02-05 | 18, 26 | 0d |
| 35 |  | Project Closeout | 1d | 2024-02-06 | 2024-02-06 | 17 | 0d |
| 36 |  | Project Complete | 0d | 2024-02-06 | 2024-02-06 | 35 | 0d |

## Version 2 (saved 2023-04-23, file resource cost_without level.mpp)

Last finish 2024-02-06 → 2025-06-25 (+505d).

Added:

| ID | Task | Duration | Start | Finish | Predecessors | Resources |
| --- | --- | --- | --- | --- | --- | --- |
| 34 | **Release 3** | 51.67d | 2024-05-30 | 2024-08-12 |  |  |
| 35 | Analysis phase | 14d | 2024-05-30 | 2024-06-19 | 26 | Cellphone10; Laptop10; PDA7; SystemAnalyst1; Desktop4; Desktop5; Desktop6; Developer4; Developer5; Developer6 |
| 36 | Design phase | 13d | 2024-06-19 | 2024-07-08 | 35 | Laptop15; NetworkEngineer; Desktop4; Desktop5; Desktop6; Developer4; Developer5; Developer6 |
| 37 | Construction phase | 11d | 2024-07-08 | 2024-07-23 | 36 | Cellphone10; Laptop10; PDA7; SystemAnalyst2; Desktop4; Desktop5; Desktop6; Developer4; Developer5; Developer6 |
| 38 | Validation phase | 4.67d | 2024-07-23 | 2024-07-30 | 37 | Cellphone7; Desktop4; Desktop5; Desktop6; Developer4; Developer5; Developer6; FunctionalManager2; Laptop5; Cellphone4; Laptop7; PDA4; Tester1; Tester2; Cellphone5; Laptop8; PDA5 |
| 39 | Deployment phase | 6d | 2024-07-30 | 2024-08-07 | 38 | Cellphone12; Laptop12; PDA9; SystemAnalyst3; Desktop4; Desktop5; Desktop6; Developer4; Developer5; Developer6 |
| 40 | Closeout | 2d | 2024-08-07 | 2024-08-09 | 39 | Cellphone7; Desktop4; Desktop5; Desktop6; Developer4; Developer5; Developer6; FunctionalManager2; Laptop5 |
| 41 | Release 3 Complete | 1d | 2024-08-09 | 2024-08-12 | 40 | Cellphone1; Cellphone2; Cellphone3; Laptop1; Laptop2; Laptop3; PDA1; PDA2; PDA3; ProjectManager1; ProjectManager2; ProjectManager3 |
| 42 | **Release 4** | 50.33d | 2024-08-12 | 2024-10-21 |  |  |
| 43 | Analysis phase | 15d | 2024-08-12 | 2024-09-02 | 34 | Cellphone10; Laptop10; PDA7; SystemAnalyst1; Desktop4; Desktop5; Desktop6; Developer4; Developer5; Developer6 |
| 44 | Design phase | 13d | 2024-09-02 | 2024-09-19 | 43 | Laptop15; NetworkEngineer; Desktop4; Desktop5; Desktop6; Developer4; Developer5; Developer6 |
| 45 | Construction phase | 8d | 2024-09-19 | 2024-10-01 | 44 | Cellphone10; Laptop10; PDA7; SystemAnalyst2; Desktop4; Desktop5; Desktop6; Developer4; Developer5; Developer6 |
| 46 | Validation phase | 7.33d | 2024-10-01 | 2024-10-10 | 45 | Cellphone7; Desktop4; Desktop5; Desktop6; Developer4; Developer5; Developer6; FunctionalManager2; Laptop5; Cellphone4; Laptop7; PDA4; Tester1; Tester2; Cellphone5; Laptop8; PDA5 |
| 47 | Deployment phase | 5d | 2024-10-10 | 2024-10-17 | 46 | Cellphone12; Laptop12; PDA9; SystemAnalyst3; Desktop4; Desktop5; Desktop6; Developer4; Developer5; Developer6 |
| 48 | Closeout | 2d | 2024-10-17 | 2024-10-21 | 47 | Cellphone7; Desktop4; Desktop5; Desktop6; Developer4; Developer5; Developer6; FunctionalManager2; Laptop5 |
| 49 | Release 4 Complete | 0d | 2024-10-21 | 2024-10-21 | 48 | Cellphone1; Cellphone2; Cellphone3; Laptop1; Laptop2; Laptop3; PDA1; PDA2; PDA3; ProjectManager1; ProjectManager2; ProjectManager3 |
| 50 | **Release 5** | 55.33d | 2024-10-21 | 2025-01-07 |  |  |
| 51 | Analysis phase | 12d | 2024-10-21 | 2024-11-06 | 42 | Cellphone10; Laptop10; PDA7; SystemAnalyst1; Desktop7; Desktop8; Desktop9; Developer7; Developer8; Developer9 |
| 52 | Design phase | 15d | 2024-11-06 | 2024-11-27 | 51 | Laptop15; NetworkEngineer; Desktop7; Desktop8; Desktop9; Developer7; Developer8; Developer9; Laptop14; SoftwareEngineer |
| 53 | Construction phase | 16d | 2024-11-27 | 2024-12-19 | 52 | Cellphone10; Laptop10; PDA7; SystemAnalyst2; Desktop7; Desktop8; Desktop9; Developer7; Developer8; Developer9 |
| 54 | Validation phase | 5.33d | 2024-12-19 | 2024-12-27 | 53 | Cellphone8; Desktop7; Desktop8; Desktop9; Developer7; Developer8; Developer9; FunctionalManager3; Laptop6; Cellphone4; Laptop7; PDA4; Tester1; Tester2; Cellphone5; Laptop8; PDA5 |
| 55 | Deployment phase | 4d | 2024-12-27 | 2025-01-02 | 54 | Cellphone12; Laptop12; PDA9; SystemAnalyst3; Desktop7; Desktop8; Desktop9; Developer7; Developer8; Developer9 |
| 56 | Closeout | 3d | 2025-01-02 | 2025-01-07 | 55 | Cellphone8; Desktop7; Desktop8; Desktop9; Developer7; Developer8; Developer9; FunctionalManager3; Laptop6 |
| 57 | Release 5 Complete | 0d | 2025-01-07 | 2025-01-07 | 56 | Cellphone1; Cellphone2; Cellphone3; Laptop1; Laptop2; Laptop3; PDA1; PDA2; PDA3; ProjectManager1; ProjectManager2; ProjectManager3 |
| 58 | **Release 6** | 60d | 2025-01-07 | 2025-04-01 |  |  |
| 59 | Analysis phase | 17d | 2025-01-07 | 2025-01-30 | 50 | Cellphone10; Laptop10; PDA7; SystemAnalyst1; Desktop7; Desktop8; Desktop9; Developer7; Developer8; Developer9 |
| 60 | Design phase | 11d | 2025-01-30 | 2025-02-14 | 59 | Laptop15; NetworkEngineer; Desktop7; Desktop8; Desktop9; Developer7; Developer8; Developer9; Laptop14; SoftwareEngineer |
| 61 | Construction phase | 15d | 2025-02-14 | 2025-03-07 | 60 | Cellphone10; Laptop10; PDA7; SystemAnalyst2; Desktop7; Desktop8; Desktop9; Developer7; Developer8; Developer9 |
| 62 | Validation phase | 6d | 2025-03-07 | 2025-03-17 | 61 | Cellphone8; Desktop7; Desktop8; Desktop9; Developer7; Developer8; Developer9; FunctionalManager3; Laptop6; Cellphone4; Laptop7; PDA4; Tester1; Tester2; Cellphone5; Laptop8; PDA5 |
| 63 | Deployment phase | 7d | 2025-03-17 | 2025-03-26 | 62 | Cellphone12; Laptop12; PDA9; SystemAnalyst3; Desktop7; Desktop8; Desktop9; Developer7; Developer8; Developer9 |
| 64 | Closeout | 4d | 2025-03-26 | 2025-04-01 | 63 | Cellphone8; Desktop7; Desktop8; Desktop9; Developer7; Developer8; Developer9; FunctionalManager3; Laptop6 |
| 65 | Release 6 Complete | 0d | 2025-04-01 | 2025-04-01 | 64 | Cellphone1; Cellphone2; Cellphone3; Laptop1; Laptop2; Laptop3; PDA1; PDA2; PDA3; ProjectManager1; ProjectManager2; ProjectManager3 |
| 66 | **Release 7** | 58d | 2025-04-01 | 2025-06-20 |  |  |
| 67 | Analysis phase | 13d | 2025-04-01 | 2025-04-18 | 58 | Cellphone10; Laptop10; PDA7; SystemAnalyst1; Desktop9; Developer9; Desktop10; Desktop11; Developer10; Developer11 |
| 68 | Design phase | 17d | 2025-04-18 | 2025-05-13 | 67 | Laptop15; NetworkEngineer; Desktop9; Developer9; Laptop14; SoftwareEngineer; Desktop10; Desktop11; Developer10; Developer11 |
| 69 | Construction phase | 15d | 2025-05-13 | 2025-06-03 | 68 | Cellphone10; Laptop10; PDA7; SystemAnalyst2; Desktop9; Developer9; Desktop10; Desktop11; Developer10; Developer11 |
| 70 | Validation phase | 6d | 2025-06-03 | 2025-06-11 | 69 | Desktop7; Desktop8; Desktop9; Developer7; Developer8; Developer9; Cellphone6; FunctionalManager1; Laptop4; Cellphone4; Cellphone5; Laptop7; Laptop8; PDA4; PDA5; Tester1; Tester2 |
| 71 | Deployment phase | 4d | 2025-06-11 | 2025-06-17 | 70 | Cellphone12; Laptop12; PDA9; SystemAnalyst3; Desktop9; Developer9; Desktop10; Desktop11; Developer10; Developer11 |
| 72 | Closeout | 3d | 2025-06-17 | 2025-06-20 | 71 | Desktop9; Developer9; Cellphone6; Desktop10; Desktop11; Developer10; Developer11; FunctionalManager1; Laptop4 |
| 73 | Release 7 Complete | 0d | 2025-06-20 | 2025-06-20 | 72 | Cellphone1; Cellphone2; Cellphone3; Laptop1; Laptop2; Laptop3; PDA1; PDA2; PDA3; ProjectManager1; ProjectManager2; ProjectManager3 |

Changed:

| ID | Task | Start | Finish | Duration | Total float | Predecessors | Other |
| --- | --- | --- | --- | --- | --- | --- | --- |
| 1 | **ERP_Project_Team_13** | 2023-03-30 → 2023-03-31 (+1d) | 2024-02-06 → 2025-06-25 (+505d) | 224d → 583.13d |  |  |  |
| 2 | **Project Initiation** | 2023-03-30 → 2023-03-31 (+1d) | 2023-06-05 → 2023-06-13 (+8d) | 48d → 53d | none → 0d |  |  |
| 3 | Develop project charter | 2023-03-30 → 2023-03-31 (+1d) | 2023-04-05 → 2023-04-13 (+8d) | 5d → 10d | 100d → 0d |  |  |
| 4 | Develop Statement Of Work | 2023-04-06 → 2023-04-14 (+8d) | 2023-04-14 → 2023-04-28 (+14d) | 7d → 11d | 100d → 0d |  |  |
| 5 | Develop preliminary scope development | 2023-04-17 → 2023-05-01 (+14d) | 2023-04-19 → 2023-05-17 (+28d) | 3d → 13d | 100d → 0d |  | resources Cellphone2; Cellphone3; Cellphone11; Cellphone12; Laptop2; Laptop3; Laptop11; Laptop12; PDA2; PDA3; PDA7; PDA8; ProjectManager2; ProjectManager3; SystemAnalyst1; SystemAnalyst2 → Cellphone1; Cellphone2; Cellphone11; Cellphone12; Laptop1; Laptop2; Laptop11; Laptop12; PDA1; PDA2; PDA7; PDA8; ProjectManager1; ProjectManager2; SystemAnalyst1; SystemAnalyst2 |
| 6 | Develop preliminary architectural model | 2023-04-20 → 2023-05-18 (+28d) | 2023-04-25 → 2023-05-29 (+34d) | 4d → 8d | 100d → 0d |  | resources Cellphone1; Cellphone2; Cellphone11; Cellphone12; Laptop1; Laptop2; Laptop11; Laptop12; PDA1; PDA2; PDA7; PDA8; ProjectManager1; ProjectManager2; SystemAnalyst1; SystemAnalyst2 → Cellphone2; Cellphone3; Cellphone11; Cellphone12; Laptop2; Laptop3; Laptop12; Laptop13; PDA2; PDA3; PDA8; PDA9; ProjectManager2; ProjectManager3; SystemAnalyst2; SystemAnalyst3 |
| 7 | Project initiation complete | 2023-04-25 → 2023-05-30 (+35d) | 2023-04-25 → 2023-06-13 (+49d) | 0d → 11d | 100d → 0d |  |  |
| 8 | **Project plan** | 2023-06-06 → 2023-06-14 (+8d) | 2023-10-18 → 2023-12-01 (+44d) | 97d → 122.8d | none → 0d |  |  |
| 9 | Develop scope management plan | 2023-06-06 → 2023-06-14 (+8d) | 2023-06-07 → 2023-06-28 (+21d) | 2d → 11d | 71d → 0d |  | resources Cellphone1; Cellphone6; Cellphone7; FunctionalManager1; FunctionalManager2; Laptop1; Laptop4; Laptop5; PDA1; ProjectManager1 → Cellphone1; Cellphone2; Laptop1; Laptop2; PDA1; PDA2; ProjectManager1; ProjectManager2 |
| 10 | Develop change management plan | 2023-06-08 → 2023-06-29 (+21d) | 2023-06-12 → 2023-07-18 (+36d) | 3d → 14d | 79d → 10d |  | resources Cellphone7; Cellphone11; Cellphone12; FunctionalManager2; Laptop5; Laptop11; Laptop12; PDA7; PDA8; SystemAnalyst1; SystemAnalyst2 → Cellphone11; Cellphone12; Laptop11; Laptop12; PDA7; PDA8; SystemAnalyst1; SystemAnalyst2 |
| 11 | Develop initial descriptive budget | 2023-06-08 → 2023-06-29 (+21d) | 2023-06-22 → 2023-08-01 (+40d) | 11d → 24d | 71d → 0d |  | resources Cellphone7; Cellphone11; Cellphone12; FunctionalManager2; Laptop5; Laptop11; Laptop12; PDA7; PDA8; SystemAnalyst1; SystemAnalyst2 → Cellphone6; Cellphone10; Cellphone11; FunctionalManager1; Laptop4; Laptop10; Laptop11; PDA7; PDA8; SystemAnalyst1; SystemAnalyst2 |
| 12 | Develop schedule | 2023-06-23 → 2023-08-02 (+40d) | 2023-06-27 → 2023-09-11 (+76d) | 3d → 29d | 71d → 0d |  | resources none → Cellphone7; Cellphone11; Cellphone12; FunctionalManager2; Laptop5; Laptop11; Laptop12; PDA8; PDA9; SystemAnalyst2; SystemAnalyst3 |
| 13 | Develop quality management plan | 2023-06-28 → 2023-09-12 (+76d) | 2023-06-30 → 2023-10-24 (+116d) | 3d → 31d | 71d → 0d |  | resources none → Cellphone7; Cellphone11; Cellphone12; FunctionalManager2; Laptop5; Laptop11; Laptop12; PDA8; PDA9; SystemAnalyst2; SystemAnalyst3 |
| 14 | Develop human resource plan | 2023-07-03 → 2023-10-25 (+114d) | 2023-07-06 → 2023-11-10 (+127d) | 4d → 13d | 71d → 0d |  | resources none → Cellphone8; Cellphone10; Cellphone12; FunctionalManager3; Laptop6; Laptop10; Laptop12; PDA7; PDA9; SystemAnalyst1; SystemAnalyst3 |
| 15 | Develop risk management plan | 2023-07-07 → 2023-11-13 (+129d) | 2023-07-11 → 2023-11-30 (+142d) | 3d → 13.8d | 71d → 0d |  | resources none → Cellphone8; Cellphone10; Cellphone12; FunctionalManager3; Laptop6; Laptop10; Laptop12; PDA7; PDA9; SystemAnalyst1; SystemAnalyst3; Cellphone9; Laptop9; Laptop13; PDA6; SecurityAnalyst; SecurityEngineer |
| 16 | Project plan complete | 2023-07-11 → 2023-11-30 (+142d) | 2023-07-11 → 2023-12-01 (+143d) | 0d → 1d | 71d → 0d |  | resources none → Cellphone1; Cellphone2; Cellphone3; Laptop1; Laptop2; Laptop3; PDA1; PDA2; PDA3; ProjectManager1; ProjectManager2; ProjectManager3 |
| 17 | **Project Execution** | 2023-10-19 → 2023-12-01 (+43d) | 2024-02-05 → 2025-06-23 (+504d) | 78d → 405.33d |  |  |  |
| 18 | **Release 1** | 2023-10-19 → 2023-12-01 (+43d) | 2023-12-29 → 2024-02-28 (+61d) | 52d → 63d |  |  |  |
| 19 | Analysis phase | 2023-10-19 → 2023-12-01 (+43d) | 2023-11-09 → 2023-12-20 (+41d) | 16d → 13d |  |  | resources none → Cellphone10; Desktop1; Desktop2; Desktop3; Developer1; Developer2; Developer3; Laptop10; PDA7; SystemAnalyst1 |
| 20 | Design phase | 2023-11-10 → 2023-12-20 (+40d) | 2023-11-28 → 2024-01-05 (+38d) | 13d → 12d |  |  | resources none → Desktop1; Desktop2; Desktop3; Developer1; Developer2; Developer3; Laptop15; NetworkEngineer |
| 21 | Construction phase | 2023-11-29 → 2024-01-05 (+37d) | 2023-12-12 → 2024-01-26 (+45d) | 10d → 15d |  |  | resources none → Cellphone10; Desktop1; Desktop2; Desktop3; Developer1; Developer2; Developer3; Laptop10; PDA7; SystemAnalyst2 |
| 22 | Validation phase | 2023-12-13 → 2024-01-26 (+44d) | 2023-12-26 → 2024-02-15 (+51d) | 10d → 14d |  |  | resources none → Cellphone6; Desktop1; Desktop2; Desktop3; Developer1; Developer2; Developer3; FunctionalManager1; Laptop4; Cellphone4; Laptop7; PDA4; Tester1; Tester2; Cellphone5; Laptop8; PDA5 |
| 23 | Deployment phase | 2023-12-27 → 2024-02-15 (+50d) | 2023-12-28 → 2024-02-26 (+60d) | 2d → 7d |  |  | resources none → Cellphone12; Desktop1; Desktop2; Desktop3; Developer1; Developer2; Developer3; Laptop12; PDA9; SystemAnalyst3 |
| 24 | Closeout | 2023-12-29 → 2024-02-26 (+59d) | 2023-12-29 → 2024-02-28 (+61d) | 1d → 2d |  |  | resources none → Cellphone6; Desktop1; Desktop2; Desktop3; Developer1; Developer2; Developer3; FunctionalManager1; Laptop4 |
| 25 | Release 1 Complete | 2023-12-29 → 2024-02-28 (+61d) | 2023-12-29 → 2024-02-28 (+61d) |  |  |  | resources none → Cellphone1; Cellphone2; Cellphone3; Laptop1; Laptop2; Laptop3; PDA1; PDA2; PDA3; ProjectManager1; ProjectManager2; ProjectManager3 |
| 26 | **Release 2** | 2024-01-01 → 2024-02-28 (+58d) | 2024-02-05 → 2024-05-30 (+115d) | 26d → 66d |  |  |  |
| 27 | Analysis phase | 2024-01-01 → 2024-02-28 (+58d) | 2024-01-10 → 2024-03-18 (+68d) | 8d → 13d |  |  | resources none → Cellphone10; Desktop1; Desktop2; Desktop3; Developer1; Developer2; Developer3; Laptop10; PDA7; SystemAnalyst1 |
| 28 | Design phase | 2024-01-11 → 2024-03-18 (+67d) | 2024-01-18 → 2024-04-05 (+78d) | 6d → 14d |  |  | resources none → Desktop1; Desktop2; Desktop3; Developer1; Developer2; Developer3; Laptop15; NetworkEngineer |
| 29 | Construction phase | 2024-01-19 → 2024-04-05 (+77d) | 2024-01-25 → 2024-04-26 (+92d) | 5d → 15d |  |  | resources none → Cellphone10; Desktop1; Desktop2; Desktop3; Developer1; Developer2; Developer3; Laptop10; PDA7; SystemAnalyst2 |
| 30 | Validation phase | 2024-01-26 → 2024-04-26 (+91d) | 2024-02-01 → 2024-05-15 (+104d) | 5d → 13d |  |  | resources none → Cellphone6; Desktop1; Desktop2; Desktop3; Developer1; Developer2; Developer3; FunctionalManager1; Laptop4; Cellphone4; Laptop7; PDA4; Tester1; Tester2; Cellphone5; Laptop8; PDA5 |
| 31 | Deployment phase | 2024-02-02 → 2024-05-15 (+103d) | 2024-02-02 → 2024-05-28 (+116d) | 1d → 9d |  |  | resources none → Cellphone12; Desktop1; Desktop2; Desktop3; Developer1; Developer2; Developer3; Laptop12; PDA9; SystemAnalyst3 |
| 32 | Closeout | 2024-02-05 → 2024-05-28 (+113d) | 2024-02-05 → 2024-05-30 (+115d) | 1d → 2d |  |  | resources none → Cellphone6; Desktop1; Desktop2; Desktop3; Developer1; Developer2; Developer3; FunctionalManager1; Laptop4 |
| 33 | Release 2 Complete | 2024-02-05 → 2024-05-30 (+115d) | 2024-02-05 → 2024-05-30 (+115d) |  |  |  | resources none → Cellphone1; Cellphone2; Cellphone3; Laptop1; Laptop2; Laptop3; PDA1; PDA2; PDA3; ProjectManager1; ProjectManager2; ProjectManager3 |
| 74 | Execution complete | 2024-02-05 → 2025-06-20 (+501d) | 2024-02-05 → 2025-06-23 (+504d) | 0d → 1d |  | 18, 26 → 18, 26, 34, 42, 50, 58, 66 |  |
| 75 | Project Closeout | 2024-02-06 → 2025-06-23 (+503d) | 2024-02-06 → 2025-06-24 (+504d) |  |  |  | resources none → Cellphone1; Cellphone2; Cellphone3; Laptop1; Laptop2; Laptop3; PDA1; PDA2; PDA3; ProjectManager1; ProjectManager2; ProjectManager3 |
| 76 | Project Complete | 2024-02-06 → 2025-06-24 (+504d) | 2024-02-06 → 2025-06-25 (+505d) | 0d → 1d |  |  | resources none → Cellphone1; Cellphone2; Cellphone3; Laptop1; Laptop2; Laptop3; PDA1; PDA2; PDA3; ProjectManager1; ProjectManager2; ProjectManager3 |

## Version 3 (saved 2023-04-23, file resource cost_level.mpp)

Last finish 2025-06-25 → 2025-07-15 (+20d).

Changed:

| ID | Task | Start | Finish | Duration | Total float |
| --- | --- | --- | --- | --- | --- |
| 1 | **ERP_Project_Team_13** |  | 2025-06-25 → 2025-07-15 (+20d) | 583.13d → 597.13d |  |
| 8 | **Project plan** |  | 2023-12-01 → 2023-12-21 (+20d) | 122.8d → 136.8d |  |
| 10 | Develop change management plan | 2023-06-29 → 2023-08-02 (+34d) | 2023-07-18 → 2023-08-21 (+34d) |  | 10d → 0d |
| 12 | Develop schedule | 2023-08-02 → 2023-08-22 (+20d) | 2023-09-11 → 2023-09-29 (+18d) |  |  |
| 13 | Develop quality management plan | 2023-09-12 → 2023-10-02 (+20d) | 2023-10-24 → 2023-11-13 (+20d) |  |  |
| 14 | Develop human resource plan | 2023-10-25 → 2023-11-14 (+20d) | 2023-11-10 → 2023-11-30 (+20d) |  |  |
| 15 | Develop risk management plan | 2023-11-13 → 2023-12-01 (+18d) | 2023-11-30 → 2023-12-20 (+20d) |  |  |
| 16 | Project plan complete | 2023-11-30 → 2023-12-20 (+20d) | 2023-12-01 → 2023-12-21 (+20d) |  |  |
| 17 | **Project Execution** | 2023-12-01 → 2023-12-21 (+20d) | 2025-06-23 → 2025-07-11 (+18d) |  |  |
| 18 | **Release 1** | 2023-12-01 → 2023-12-21 (+20d) | 2024-02-28 → 2024-03-19 (+20d) |  |  |
| 19 | Analysis phase | 2023-12-01 → 2023-12-21 (+20d) | 2023-12-20 → 2024-01-09 (+20d) |  |  |
| 20 | Design phase | 2023-12-20 → 2024-01-09 (+20d) | 2024-01-05 → 2024-01-25 (+20d) |  |  |
| 21 | Construction phase | 2024-01-05 → 2024-01-25 (+20d) | 2024-01-26 → 2024-02-15 (+20d) |  |  |
| 22 | Validation phase | 2024-01-26 → 2024-02-15 (+20d) | 2024-02-15 → 2024-03-06 (+20d) |  |  |
| 23 | Deployment phase | 2024-02-15 → 2024-03-06 (+20d) | 2024-02-26 → 2024-03-15 (+18d) |  |  |
| 24 | Closeout | 2024-02-26 → 2024-03-15 (+18d) | 2024-02-28 → 2024-03-19 (+20d) |  |  |
| 25 | Release 1 Complete | 2024-02-28 → 2024-03-19 (+20d) | 2024-02-28 → 2024-03-19 (+20d) |  |  |
| 26 | **Release 2** | 2024-02-28 → 2024-03-19 (+20d) | 2024-05-30 → 2024-06-19 (+20d) |  |  |
| 27 | Analysis phase | 2024-02-28 → 2024-03-19 (+20d) | 2024-03-18 → 2024-04-05 (+18d) |  |  |
| 28 | Design phase | 2024-03-18 → 2024-04-05 (+18d) | 2024-04-05 → 2024-04-25 (+20d) |  |  |
| 29 | Construction phase | 2024-04-05 → 2024-04-25 (+20d) | 2024-04-26 → 2024-05-16 (+20d) |  |  |
| 30 | Validation phase | 2024-04-26 → 2024-05-16 (+20d) | 2024-05-15 → 2024-06-04 (+20d) |  |  |
| 31 | Deployment phase | 2024-05-15 → 2024-06-04 (+20d) | 2024-05-28 → 2024-06-17 (+20d) |  |  |
| 32 | Closeout | 2024-05-28 → 2024-06-17 (+20d) | 2024-05-30 → 2024-06-19 (+20d) |  |  |
| 33 | Release 2 Complete | 2024-05-30 → 2024-06-19 (+20d) | 2024-05-30 → 2024-06-19 (+20d) |  |  |
| 34 | **Release 3** | 2024-05-30 → 2024-06-19 (+20d) | 2024-08-12 → 2024-08-30 (+18d) |  |  |
| 35 | Analysis phase | 2024-05-30 → 2024-06-19 (+20d) | 2024-06-19 → 2024-07-09 (+20d) |  |  |
| 36 | Design phase | 2024-06-19 → 2024-07-09 (+20d) | 2024-07-08 → 2024-07-26 (+18d) |  |  |
| 37 | Construction phase | 2024-07-08 → 2024-07-26 (+18d) | 2024-07-23 → 2024-08-12 (+20d) |  |  |
| 38 | Validation phase | 2024-07-23 → 2024-08-12 (+20d) | 2024-07-30 → 2024-08-19 (+20d) |  |  |
| 39 | Deployment phase | 2024-07-30 → 2024-08-19 (+20d) | 2024-08-07 → 2024-08-27 (+20d) |  |  |
| 40 | Closeout | 2024-08-07 → 2024-08-27 (+20d) | 2024-08-09 → 2024-08-29 (+20d) |  |  |
| 41 | Release 3 Complete | 2024-08-09 → 2024-08-29 (+20d) | 2024-08-12 → 2024-08-30 (+18d) |  |  |
| 42 | **Release 4** | 2024-08-12 → 2024-08-30 (+18d) | 2024-10-21 → 2024-11-08 (+18d) |  |  |
| 43 | Analysis phase | 2024-08-12 → 2024-08-30 (+18d) | 2024-09-02 → 2024-09-20 (+18d) |  |  |
| 44 | Design phase | 2024-09-02 → 2024-09-20 (+18d) | 2024-09-19 → 2024-10-09 (+20d) |  |  |
| 45 | Construction phase | 2024-09-19 → 2024-10-09 (+20d) | 2024-10-01 → 2024-10-21 (+20d) |  |  |
| 46 | Validation phase | 2024-10-01 → 2024-10-21 (+20d) | 2024-10-10 → 2024-10-30 (+20d) |  |  |
| 47 | Deployment phase | 2024-10-10 → 2024-10-30 (+20d) | 2024-10-17 → 2024-11-06 (+20d) |  |  |
| 48 | Closeout | 2024-10-17 → 2024-11-06 (+20d) | 2024-10-21 → 2024-11-08 (+18d) |  |  |
| 49 | Release 4 Complete | 2024-10-21 → 2024-11-08 (+18d) | 2024-10-21 → 2024-11-08 (+18d) |  |  |
| 50 | **Release 5** | 2024-10-21 → 2024-11-08 (+18d) | 2025-01-07 → 2025-01-27 (+20d) |  |  |
| 51 | Analysis phase | 2024-10-21 → 2024-11-08 (+18d) | 2024-11-06 → 2024-11-26 (+20d) |  |  |
| 52 | Design phase | 2024-11-06 → 2024-11-26 (+20d) | 2024-11-27 → 2024-12-17 (+20d) |  |  |
| 53 | Construction phase | 2024-11-27 → 2024-12-17 (+20d) | 2024-12-19 → 2025-01-08 (+20d) |  |  |
| 54 | Validation phase | 2024-12-19 → 2025-01-08 (+20d) | 2024-12-27 → 2025-01-16 (+20d) |  |  |
| 55 | Deployment phase | 2024-12-27 → 2025-01-16 (+20d) | 2025-01-02 → 2025-01-22 (+20d) |  |  |
| 56 | Closeout | 2025-01-02 → 2025-01-22 (+20d) | 2025-01-07 → 2025-01-27 (+20d) |  |  |
| 57 | Release 5 Complete | 2025-01-07 → 2025-01-27 (+20d) | 2025-01-07 → 2025-01-27 (+20d) |  |  |
| 58 | **Release 6** | 2025-01-07 → 2025-01-27 (+20d) | 2025-04-01 → 2025-04-21 (+20d) |  |  |
| 59 | Analysis phase | 2025-01-07 → 2025-01-27 (+20d) | 2025-01-30 → 2025-02-19 (+20d) |  |  |
| 60 | Design phase | 2025-01-30 → 2025-02-19 (+20d) | 2025-02-14 → 2025-03-06 (+20d) |  |  |
| 61 | Construction phase | 2025-02-14 → 2025-03-06 (+20d) | 2025-03-07 → 2025-03-27 (+20d) |  |  |
| 62 | Validation phase | 2025-03-07 → 2025-03-27 (+20d) | 2025-03-17 → 2025-04-04 (+18d) |  |  |
| 63 | Deployment phase | 2025-03-17 → 2025-04-04 (+18d) | 2025-03-26 → 2025-04-15 (+20d) |  |  |
| 64 | Closeout | 2025-03-26 → 2025-04-15 (+20d) | 2025-04-01 → 2025-04-21 (+20d) |  |  |
| 65 | Release 6 Complete | 2025-04-01 → 2025-04-21 (+20d) | 2025-04-01 → 2025-04-21 (+20d) |  |  |
| 66 | **Release 7** | 2025-04-01 → 2025-04-21 (+20d) | 2025-06-20 → 2025-07-10 (+20d) |  |  |
| 67 | Analysis phase | 2025-04-01 → 2025-04-21 (+20d) | 2025-04-18 → 2025-05-08 (+20d) |  |  |
| 68 | Design phase | 2025-04-18 → 2025-05-08 (+20d) | 2025-05-13 → 2025-06-02 (+20d) |  |  |
| 69 | Construction phase | 2025-05-13 → 2025-06-02 (+20d) | 2025-06-03 → 2025-06-23 (+20d) |  |  |
| 70 | Validation phase | 2025-06-03 → 2025-06-23 (+20d) | 2025-06-11 → 2025-07-01 (+20d) |  |  |
| 71 | Deployment phase | 2025-06-11 → 2025-07-01 (+20d) | 2025-06-17 → 2025-07-07 (+20d) |  |  |
| 72 | Closeout | 2025-06-17 → 2025-07-07 (+20d) | 2025-06-20 → 2025-07-10 (+20d) |  |  |
| 73 | Release 7 Complete | 2025-06-20 → 2025-07-10 (+20d) | 2025-06-20 → 2025-07-10 (+20d) |  |  |
| 74 | Execution complete | 2025-06-20 → 2025-07-10 (+20d) | 2025-06-23 → 2025-07-11 (+18d) |  |  |
| 75 | Project Closeout | 2025-06-23 → 2025-07-11 (+18d) | 2025-06-24 → 2025-07-14 (+20d) |  |  |
| 76 | Project Complete | 2025-06-24 → 2025-07-14 (+20d) | 2025-06-25 → 2025-07-15 (+20d) |  |  |

## Version 4 (saved 2023-04-23, file baseline.mpp)

Last finish stays 2025-07-15.

Changed:

| ID | Task | Other |
| --- | --- | --- |
| 1 | **ERP_Project_Team_13** | baseline start none → 2023-03-31; baseline finish none → 2025-07-15 |
| 2 | **Project Initiation** | baseline start none → 2023-03-31; baseline finish none → 2023-06-13 |
| 3 | Develop project charter | baseline start none → 2023-03-31; baseline finish none → 2023-04-13 |
| 4 | Develop Statement Of Work | baseline start none → 2023-04-14; baseline finish none → 2023-04-28 |
| 5 | Develop preliminary scope development | baseline start none → 2023-05-01; baseline finish none → 2023-05-17 |
| 6 | Develop preliminary architectural model | baseline start none → 2023-05-18; baseline finish none → 2023-05-29 |
| 7 | Project initiation complete | baseline start none → 2023-05-30; baseline finish none → 2023-06-13 |
| 8 | **Project plan** | baseline start none → 2023-06-14; baseline finish none → 2023-12-21 |
| 9 | Develop scope management plan | baseline start none → 2023-06-14; baseline finish none → 2023-06-28 |
| 10 | Develop change management plan | baseline start none → 2023-08-02; baseline finish none → 2023-08-21 |
| 11 | Develop initial descriptive budget | baseline start none → 2023-06-29; baseline finish none → 2023-08-01 |
| 12 | Develop schedule | baseline start none → 2023-08-22; baseline finish none → 2023-09-29 |
| 13 | Develop quality management plan | baseline start none → 2023-10-02; baseline finish none → 2023-11-13 |
| 14 | Develop human resource plan | baseline start none → 2023-11-14; baseline finish none → 2023-11-30 |
| 15 | Develop risk management plan | baseline start none → 2023-12-01; baseline finish none → 2023-12-20 |
| 16 | Project plan complete | baseline start none → 2023-12-20; baseline finish none → 2023-12-21 |
| 17 | **Project Execution** | baseline start none → 2023-12-21; baseline finish none → 2025-07-11 |
| 18 | **Release 1** | baseline start none → 2023-12-21; baseline finish none → 2024-03-19 |
| 19 | Analysis phase | baseline start none → 2023-12-21; baseline finish none → 2024-01-09 |
| 20 | Design phase | baseline start none → 2024-01-09; baseline finish none → 2024-01-25 |
| 21 | Construction phase | baseline start none → 2024-01-25; baseline finish none → 2024-02-15 |
| 22 | Validation phase | baseline start none → 2024-02-15; baseline finish none → 2024-03-06 |
| 23 | Deployment phase | baseline start none → 2024-03-06; baseline finish none → 2024-03-15 |
| 24 | Closeout | baseline start none → 2024-03-15; baseline finish none → 2024-03-19 |
| 25 | Release 1 Complete | baseline start none → 2024-03-19; baseline finish none → 2024-03-19 |
| 26 | **Release 2** | baseline start none → 2024-03-19; baseline finish none → 2024-06-19 |
| 27 | Analysis phase | baseline start none → 2024-03-19; baseline finish none → 2024-04-05 |
| 28 | Design phase | baseline start none → 2024-04-05; baseline finish none → 2024-04-25 |
| 29 | Construction phase | baseline start none → 2024-04-25; baseline finish none → 2024-05-16 |
| 30 | Validation phase | baseline start none → 2024-05-16; baseline finish none → 2024-06-04 |
| 31 | Deployment phase | baseline start none → 2024-06-04; baseline finish none → 2024-06-17 |
| 32 | Closeout | baseline start none → 2024-06-17; baseline finish none → 2024-06-19 |
| 33 | Release 2 Complete | baseline start none → 2024-06-19; baseline finish none → 2024-06-19 |
| 34 | **Release 3** | baseline start none → 2024-06-19; baseline finish none → 2024-08-30 |
| 35 | Analysis phase | baseline start none → 2024-06-19; baseline finish none → 2024-07-09 |
| 36 | Design phase | baseline start none → 2024-07-09; baseline finish none → 2024-07-26 |
| 37 | Construction phase | baseline start none → 2024-07-26; baseline finish none → 2024-08-12 |
| 38 | Validation phase | baseline start none → 2024-08-12; baseline finish none → 2024-08-19 |
| 39 | Deployment phase | baseline start none → 2024-08-19; baseline finish none → 2024-08-27 |
| 40 | Closeout | baseline start none → 2024-08-27; baseline finish none → 2024-08-29 |
| 41 | Release 3 Complete | baseline start none → 2024-08-29; baseline finish none → 2024-08-30 |
| 42 | **Release 4** | baseline start none → 2024-08-30; baseline finish none → 2024-11-08 |
| 43 | Analysis phase | baseline start none → 2024-08-30; baseline finish none → 2024-09-20 |
| 44 | Design phase | baseline start none → 2024-09-20; baseline finish none → 2024-10-09 |
| 45 | Construction phase | baseline start none → 2024-10-09; baseline finish none → 2024-10-21 |
| 46 | Validation phase | baseline start none → 2024-10-21; baseline finish none → 2024-10-30 |
| 47 | Deployment phase | baseline start none → 2024-10-30; baseline finish none → 2024-11-06 |
| 48 | Closeout | baseline start none → 2024-11-06; baseline finish none → 2024-11-08 |
| 49 | Release 4 Complete | baseline start none → 2024-11-08; baseline finish none → 2024-11-08 |
| 50 | **Release 5** | baseline start none → 2024-11-08; baseline finish none → 2025-01-27 |
| 51 | Analysis phase | baseline start none → 2024-11-08; baseline finish none → 2024-11-26 |
| 52 | Design phase | baseline start none → 2024-11-26; baseline finish none → 2024-12-17 |
| 53 | Construction phase | baseline start none → 2024-12-17; baseline finish none → 2025-01-08 |
| 54 | Validation phase | baseline start none → 2025-01-08; baseline finish none → 2025-01-16 |
| 55 | Deployment phase | baseline start none → 2025-01-16; baseline finish none → 2025-01-22 |
| 56 | Closeout | baseline start none → 2025-01-22; baseline finish none → 2025-01-27 |
| 57 | Release 5 Complete | baseline start none → 2025-01-27; baseline finish none → 2025-01-27 |
| 58 | **Release 6** | baseline start none → 2025-01-27; baseline finish none → 2025-04-21 |
| 59 | Analysis phase | baseline start none → 2025-01-27; baseline finish none → 2025-02-19 |
| 60 | Design phase | baseline start none → 2025-02-19; baseline finish none → 2025-03-06 |
| 61 | Construction phase | baseline start none → 2025-03-06; baseline finish none → 2025-03-27 |
| 62 | Validation phase | baseline start none → 2025-03-27; baseline finish none → 2025-04-04 |
| 63 | Deployment phase | baseline start none → 2025-04-04; baseline finish none → 2025-04-15 |
| 64 | Closeout | baseline start none → 2025-04-15; baseline finish none → 2025-04-21 |
| 65 | Release 6 Complete | baseline start none → 2025-04-21; baseline finish none → 2025-04-21 |
| 66 | **Release 7** | baseline start none → 2025-04-21; baseline finish none → 2025-07-10 |
| 67 | Analysis phase | baseline start none → 2025-04-21; baseline finish none → 2025-05-08 |
| 68 | Design phase | baseline start none → 2025-05-08; baseline finish none → 2025-06-02 |
| 69 | Construction phase | baseline start none → 2025-06-02; baseline finish none → 2025-06-23 |
| 70 | Validation phase | baseline start none → 2025-06-23; baseline finish none → 2025-07-01 |

| ID | Task | Other |
| --- | --- | --- |
| 71 | Deployment phase | baseline start none → 2025-07-01; baseline finish none → 2025-07-07 |
| 72 | Closeout | baseline start none → 2025-07-07; baseline finish none → 2025-07-10 |
| 73 | Release 7 Complete | baseline start none → 2025-07-10; baseline finish none → 2025-07-10 |
| 74 | Execution complete | baseline start none → 2025-07-10; baseline finish none → 2025-07-11 |
| 75 | Project Closeout | baseline start none → 2025-07-11; baseline finish none → 2025-07-14 |
| 76 | Project Complete | baseline start none → 2025-07-14; baseline finish none → 2025-07-15 |

## Version 5 (saved 2023-04-23, file actual work.mpp)

Last finish stays 2025-07-15. Complete tasks 0 → 23.

Changed:

| ID | Task | Start | Finish | Complete | Total float | Other |
| --- | --- | --- | --- | --- | --- | --- |
| 1 | **ERP_Project_Team_13** | 2023-03-31 A |  | 0% → 50% |  | baseline start 2023-03-31 → none; baseline finish 2025-07-15 → none |
| 2 | **Project Initiation** | 2023-03-31 A | 2023-06-13 A | 0% → 100% | 0d → none | baseline start 2023-03-31 → none; baseline finish 2023-06-13 → none |
| 3 | Develop project charter | 2023-03-31 A | 2023-04-13 A | 0% → 100% | 0d → none | baseline start 2023-03-31 → none; baseline finish 2023-04-13 → none |
| 4 | Develop Statement Of Work | 2023-04-14 A | 2023-04-28 A | 0% → 100% | 0d → none | baseline start 2023-04-14 → none; baseline finish 2023-04-28 → none |
| 5 | Develop preliminary scope development | 2023-05-01 A | 2023-05-17 A | 0% → 100% | 0d → none | baseline start 2023-05-01 → none; baseline finish 2023-05-17 → none |
| 6 | Develop preliminary architectural model | 2023-05-18 A | 2023-05-29 A | 0% → 100% | 0d → none | baseline start 2023-05-18 → none; baseline finish 2023-05-29 → none |
| 7 | Project initiation complete | 2023-05-30 A | 2023-06-13 A | 0% → 100% | 0d → none | baseline start 2023-05-30 → none; baseline finish 2023-06-13 → none |
| 8 | **Project plan** | 2023-06-14 A | 2023-12-21 A | 0% → 100% | 0d → none | baseline start 2023-06-14 → none; baseline finish 2023-12-21 → none |
| 9 | Develop scope management plan | 2023-06-14 A | 2023-06-28 A | 0% → 100% | 0d → none | baseline start 2023-06-14 → none; baseline finish 2023-06-28 → none |
| 10 | Develop change management plan | 2023-08-02 A | 2023-08-21 A | 0% → 100% | 0d → none | baseline start 2023-08-02 → none; baseline finish 2023-08-21 → none |
| 11 | Develop initial descriptive budget | 2023-06-29 A | 2023-08-01 A | 0% → 100% | 14d → none | baseline start 2023-06-29 → none; baseline finish 2023-08-01 → none |
| 12 | Develop schedule | 2023-08-22 A | 2023-09-29 A | 0% → 100% | 0d → none | baseline start 2023-08-22 → none; baseline finish 2023-09-29 → none |
| 13 | Develop quality management plan | 2023-10-02 A | 2023-11-13 A | 0% → 100% | 0d → none | baseline start 2023-10-02 → none; baseline finish 2023-11-13 → none |
| 14 | Develop human resource plan | 2023-11-14 A | 2023-11-30 A | 0% → 100% | 0d → none | baseline start 2023-11-14 → none; baseline finish 2023-11-30 → none |
| 15 | Develop risk management plan | 2023-12-01 A | 2023-12-20 A | 0% → 100% | 0d → none | baseline start 2023-12-01 → none; baseline finish 2023-12-20 → none |
| 16 | Project plan complete | 2023-12-20 A | 2023-12-21 A | 0% → 100% | 0d → none | baseline start 2023-12-20 → none; baseline finish 2023-12-21 → none |
| 17 | **Project Execution** | 2023-12-21 A |  | 0% → 27% |  | baseline start 2023-12-21 → none; baseline finish 2025-07-11 → none |
| 18 | **Release 1** | 2023-12-21 A | 2024-03-19 A | 0% → 100% | 0d → none | baseline start 2023-12-21 → none; baseline finish 2024-03-19 → none |
| 19 | Analysis phase | 2023-12-21 A | 2024-01-09 A | 0% → 100% | 0d → none | baseline start 2023-12-21 → none; baseline finish 2024-01-09 → none |
| 20 | Design phase | 2024-01-09 A | 2024-01-25 A | 0% → 100% | 0d → none | baseline start 2024-01-09 → none; baseline finish 2024-01-25 → none |
| 21 | Construction phase | 2024-01-25 A | 2024-02-15 A | 0% → 100% | 0d → none | baseline start 2024-01-25 → none; baseline finish 2024-02-15 → none |
| 22 | Validation phase | 2024-02-15 A | 2024-03-06 A | 0% → 100% | 0d → none | baseline start 2024-02-15 → none; baseline finish 2024-03-06 → none |
| 23 | Deployment phase | 2024-03-06 A | 2024-03-15 A | 0% → 100% | 0d → none | baseline start 2024-03-06 → none; baseline finish 2024-03-15 → none |
| 24 | Closeout | 2024-03-15 A | 2024-03-19 A | 0% → 100% | 0d → none | baseline start 2024-03-15 → none; baseline finish 2024-03-19 → none |
| 25 | Release 1 Complete | 2024-03-19 A | 2024-03-19 A | 0% → 100% | 0d → none | baseline start 2024-03-19 → none; baseline finish 2024-03-19 → none |
| 26 | **Release 2** | 2024-03-19 A |  | 0% → 69% |  | baseline start 2024-03-19 → none; baseline finish 2024-06-19 → none |
| 27 | Analysis phase | 2024-03-19 A | 2024-04-05 A | 0% → 100% | 0d → none | baseline start 2024-03-19 → none; baseline finish 2024-04-05 → none |
| 28 | Design phase | 2024-04-05 A | 2024-04-25 A | 0% → 100% | 0d → none | baseline start 2024-04-05 → none; baseline finish 2024-04-25 → none |
| 29 | Construction phase | 2024-04-25 A | 2024-05-16 A | 0% → 100% | 0d → none | baseline start 2024-04-25 → none; baseline finish 2024-05-16 → none |
| 30 | Validation phase | 2024-05-16 A |  | 0% → 29% |  | baseline start 2024-05-16 → none; baseline finish 2024-06-04 → none |
| 31 | Deployment phase |  |  |  |  | baseline start 2024-06-04 → none; baseline finish 2024-06-17 → none |
| 32 | Closeout |  |  |  |  | baseline start 2024-06-17 → none; baseline finish 2024-06-19 → none |
| 33 | Release 2 Complete |  |  |  |  | baseline start 2024-06-19 → none; baseline finish 2024-06-19 → none |
| 34 | **Release 3** |  |  |  |  | baseline start 2024-06-19 → none; baseline finish 2024-08-30 → none |
| 35 | Analysis phase |  |  |  |  | baseline start 2024-06-19 → none; baseline finish 2024-07-09 → none |
| 36 | Design phase |  |  |  |  | baseline start 2024-07-09 → none; baseline finish 2024-07-26 → none |
| 37 | Construction phase |  |  |  |  | baseline start 2024-07-26 → none; baseline finish 2024-08-12 → none |
| 38 | Validation phase |  |  |  |  | baseline start 2024-08-12 → none; baseline finish 2024-08-19 → none |
| 39 | Deployment phase |  |  |  |  | baseline start 2024-08-19 → none; baseline finish 2024-08-27 → none |
| 40 | Closeout |  |  |  |  | baseline start 2024-08-27 → none; baseline finish 2024-08-29 → none |
| 41 | Release 3 Complete |  |  |  |  | baseline start 2024-08-29 → none; baseline finish 2024-08-30 → none |
| 42 | **Release 4** |  |  |  |  | baseline start 2024-08-30 → none; baseline finish 2024-11-08 → none |
| 43 | Analysis phase |  |  |  |  | baseline start 2024-08-30 → none; baseline finish 2024-09-20 → none |
| 44 | Design phase |  |  |  |  | baseline start 2024-09-20 → none; baseline finish 2024-10-09 → none |
| 45 | Construction phase |  |  |  |  | baseline start 2024-10-09 → none; baseline finish 2024-10-21 → none |
| 46 | Validation phase |  |  |  |  | baseline start 2024-10-21 → none; baseline finish 2024-10-30 → none |
| 47 | Deployment phase |  |  |  |  | baseline start 2024-10-30 → none; baseline finish 2024-11-06 → none |
| 48 | Closeout |  |  |  |  | baseline start 2024-11-06 → none; baseline finish 2024-11-08 → none |
| 49 | Release 4 Complete |  |  |  |  | baseline start 2024-11-08 → none; baseline finish 2024-11-08 → none |
| 50 | **Release 5** |  |  |  |  | baseline start 2024-11-08 → none; baseline finish 2025-01-27 → none |
| 51 | Analysis phase |  |  |  |  | baseline start 2024-11-08 → none; baseline finish 2024-11-26 → none |
| 52 | Design phase |  |  |  |  | baseline start 2024-11-26 → none; baseline finish 2024-12-17 → none |
| 53 | Construction phase |  |  |  |  | baseline start 2024-12-17 → none; baseline finish 2025-01-08 → none |
| 54 | Validation phase |  |  |  |  | baseline start 2025-01-08 → none; baseline finish 2025-01-16 → none |
| 55 | Deployment phase |  |  |  |  | baseline start 2025-01-16 → none; baseline finish 2025-01-22 → none |
| 56 | Closeout |  |  |  |  | baseline start 2025-01-22 → none; baseline finish 2025-01-27 → none |
| 57 | Release 5 Complete |  |  |  |  | baseline start 2025-01-27 → none; baseline finish 2025-01-27 → none |
| 58 | **Release 6** |  |  |  |  | baseline start 2025-01-27 → none; baseline finish 2025-04-21 → none |
| 59 | Analysis phase |  |  |  |  | baseline start 2025-01-27 → none; baseline finish 2025-02-19 → none |
| 60 | Design phase |  |  |  |  | baseline start 2025-02-19 → none; baseline finish 2025-03-06 → none |
| 61 | Construction phase |  |  |  |  | baseline start 2025-03-06 → none; baseline finish 2025-03-27 → none |
| 62 | Validation phase |  |  |  |  | baseline start 2025-03-27 → none; baseline finish 2025-04-04 → none |
| 63 | Deployment phase |  |  |  |  | baseline start 2025-04-04 → none; baseline finish 2025-04-15 → none |
| 64 | Closeout |  |  |  |  | baseline start 2025-04-15 → none; baseline finish 2025-04-21 → none |
| 65 | Release 6 Complete |  |  |  |  | baseline start 2025-04-21 → none; baseline finish 2025-04-21 → none |
| 66 | **Release 7** |  |  |  |  | baseline start 2025-04-21 → none; baseline finish 2025-07-10 → none |
| 67 | Analysis phase |  |  |  |  | baseline start 2025-04-21 → none; baseline finish 2025-05-08 → none |
| 68 | Design phase |  |  |  |  | baseline start 2025-05-08 → none; baseline finish 2025-06-02 → none |
| 69 | Construction phase |  |  |  |  | baseline start 2025-06-02 → none; baseline finish 2025-06-23 → none |
| 70 | Validation phase |  |  |  |  | baseline start 2025-06-23 → none; baseline finish 2025-07-01 → none |

| ID | Task | Other |
| --- | --- | --- |
| 71 | Deployment phase | baseline start 2025-07-01 → none; baseline finish 2025-07-07 → none |
| 72 | Closeout | baseline start 2025-07-07 → none; baseline finish 2025-07-10 → none |
| 73 | Release 7 Complete | baseline start 2025-07-10 → none; baseline finish 2025-07-10 → none |
| 74 | Execution complete | baseline start 2025-07-10 → none; baseline finish 2025-07-11 → none |
| 75 | Project Closeout | baseline start 2025-07-11 → none; baseline finish 2025-07-14 → none |
| 76 | Project Complete | baseline start 2025-07-14 → none; baseline finish 2025-07-15 → none |

## Version 6 (saved 2023-04-23, file project cost after basline.mpp)

Last finish stays 2025-07-15.

Changed:

| ID | Task | Other |
| --- | --- | --- |
| 1 | **ERP_Project_Team_13** | baseline start none → 2023-03-31; baseline finish none → 2025-07-15 |
| 2 | **Project Initiation** | baseline start none → 2023-03-31; baseline finish none → 2023-06-13 |
| 3 | Develop project charter | baseline start none → 2023-03-31; baseline finish none → 2023-04-13 |
| 4 | Develop Statement Of Work | baseline start none → 2023-04-14; baseline finish none → 2023-04-28 |
| 5 | Develop preliminary scope development | baseline start none → 2023-05-01; baseline finish none → 2023-05-17 |
| 6 | Develop preliminary architectural model | baseline start none → 2023-05-18; baseline finish none → 2023-05-29 |
| 7 | Project initiation complete | baseline start none → 2023-05-30; baseline finish none → 2023-06-13 |
| 8 | **Project plan** | baseline start none → 2023-06-14; baseline finish none → 2023-12-21 |
| 9 | Develop scope management plan | baseline start none → 2023-06-14; baseline finish none → 2023-06-28 |
| 10 | Develop change management plan | baseline start none → 2023-08-02; baseline finish none → 2023-08-21 |
| 11 | Develop initial descriptive budget | baseline start none → 2023-06-29; baseline finish none → 2023-08-01 |
| 12 | Develop schedule | baseline start none → 2023-08-22; baseline finish none → 2023-09-29 |
| 13 | Develop quality management plan | baseline start none → 2023-10-02; baseline finish none → 2023-11-13 |
| 14 | Develop human resource plan | baseline start none → 2023-11-14; baseline finish none → 2023-11-30 |
| 15 | Develop risk management plan | baseline start none → 2023-12-01; baseline finish none → 2023-12-20 |
| 16 | Project plan complete | baseline start none → 2023-12-20; baseline finish none → 2023-12-21 |
| 17 | **Project Execution** | baseline start none → 2023-12-21; baseline finish none → 2025-07-11 |
| 18 | **Release 1** | baseline start none → 2023-12-21; baseline finish none → 2024-03-19 |
| 19 | Analysis phase | baseline start none → 2023-12-21; baseline finish none → 2024-01-09 |
| 20 | Design phase | baseline start none → 2024-01-09; baseline finish none → 2024-01-25 |
| 21 | Construction phase | baseline start none → 2024-01-25; baseline finish none → 2024-02-15 |
| 22 | Validation phase | baseline start none → 2024-02-15; baseline finish none → 2024-03-06 |
| 23 | Deployment phase | baseline start none → 2024-03-06; baseline finish none → 2024-03-15 |
| 24 | Closeout | baseline start none → 2024-03-15; baseline finish none → 2024-03-19 |
| 25 | Release 1 Complete | baseline start none → 2024-03-19; baseline finish none → 2024-03-19 |
| 26 | **Release 2** | baseline start none → 2024-03-19; baseline finish none → 2024-06-19 |
| 27 | Analysis phase | baseline start none → 2024-03-19; baseline finish none → 2024-04-05 |
| 28 | Design phase | baseline start none → 2024-04-05; baseline finish none → 2024-04-25 |
| 29 | Construction phase | baseline start none → 2024-04-25; baseline finish none → 2024-05-16 |
| 30 | Validation phase | baseline start none → 2024-05-16; baseline finish none → 2024-06-04 |
| 31 | Deployment phase | baseline start none → 2024-06-04; baseline finish none → 2024-06-17 |
| 32 | Closeout | baseline start none → 2024-06-17; baseline finish none → 2024-06-19 |
| 33 | Release 2 Complete | baseline start none → 2024-06-19; baseline finish none → 2024-06-19 |
| 34 | **Release 3** | baseline start none → 2024-06-19; baseline finish none → 2024-08-30 |
| 35 | Analysis phase | baseline start none → 2024-06-19; baseline finish none → 2024-07-09 |
| 36 | Design phase | baseline start none → 2024-07-09; baseline finish none → 2024-07-26 |
| 37 | Construction phase | baseline start none → 2024-07-26; baseline finish none → 2024-08-12 |
| 38 | Validation phase | baseline start none → 2024-08-12; baseline finish none → 2024-08-19 |
| 39 | Deployment phase | baseline start none → 2024-08-19; baseline finish none → 2024-08-27 |
| 40 | Closeout | baseline start none → 2024-08-27; baseline finish none → 2024-08-29 |
| 41 | Release 3 Complete | baseline start none → 2024-08-29; baseline finish none → 2024-08-30 |
| 42 | **Release 4** | baseline start none → 2024-08-30; baseline finish none → 2024-11-08 |
| 43 | Analysis phase | baseline start none → 2024-08-30; baseline finish none → 2024-09-20 |
| 44 | Design phase | baseline start none → 2024-09-20; baseline finish none → 2024-10-09 |
| 45 | Construction phase | baseline start none → 2024-10-09; baseline finish none → 2024-10-21 |
| 46 | Validation phase | baseline start none → 2024-10-21; baseline finish none → 2024-10-30 |
| 47 | Deployment phase | baseline start none → 2024-10-30; baseline finish none → 2024-11-06 |
| 48 | Closeout | baseline start none → 2024-11-06; baseline finish none → 2024-11-08 |
| 49 | Release 4 Complete | baseline start none → 2024-11-08; baseline finish none → 2024-11-08 |
| 50 | **Release 5** | baseline start none → 2024-11-08; baseline finish none → 2025-01-27 |
| 51 | Analysis phase | baseline start none → 2024-11-08; baseline finish none → 2024-11-26 |
| 52 | Design phase | baseline start none → 2024-11-26; baseline finish none → 2024-12-17 |
| 53 | Construction phase | baseline start none → 2024-12-17; baseline finish none → 2025-01-08 |
| 54 | Validation phase | baseline start none → 2025-01-08; baseline finish none → 2025-01-16 |
| 55 | Deployment phase | baseline start none → 2025-01-16; baseline finish none → 2025-01-22 |
| 56 | Closeout | baseline start none → 2025-01-22; baseline finish none → 2025-01-27 |
| 57 | Release 5 Complete | baseline start none → 2025-01-27; baseline finish none → 2025-01-27 |
| 58 | **Release 6** | baseline start none → 2025-01-27; baseline finish none → 2025-04-21 |
| 59 | Analysis phase | baseline start none → 2025-01-27; baseline finish none → 2025-02-19 |
| 60 | Design phase | baseline start none → 2025-02-19; baseline finish none → 2025-03-06 |
| 61 | Construction phase | baseline start none → 2025-03-06; baseline finish none → 2025-03-27 |
| 62 | Validation phase | baseline start none → 2025-03-27; baseline finish none → 2025-04-04 |
| 63 | Deployment phase | baseline start none → 2025-04-04; baseline finish none → 2025-04-15 |
| 64 | Closeout | baseline start none → 2025-04-15; baseline finish none → 2025-04-21 |
| 65 | Release 6 Complete | baseline start none → 2025-04-21; baseline finish none → 2025-04-21 |
| 66 | **Release 7** | baseline start none → 2025-04-21; baseline finish none → 2025-07-10 |
| 67 | Analysis phase | baseline start none → 2025-04-21; baseline finish none → 2025-05-08 |
| 68 | Design phase | baseline start none → 2025-05-08; baseline finish none → 2025-06-02 |
| 69 | Construction phase | baseline start none → 2025-06-02; baseline finish none → 2025-06-23 |
| 70 | Validation phase | baseline start none → 2025-06-23; baseline finish none → 2025-07-01 |

| ID | Task | Other |
| --- | --- | --- |
| 71 | Deployment phase | baseline start none → 2025-07-01; baseline finish none → 2025-07-07 |
| 72 | Closeout | baseline start none → 2025-07-07; baseline finish none → 2025-07-10 |
| 73 | Release 7 Complete | baseline start none → 2025-07-10; baseline finish none → 2025-07-10 |
| 74 | Execution complete | baseline start none → 2025-07-10; baseline finish none → 2025-07-11 |
| 75 | Project Closeout | baseline start none → 2025-07-11; baseline finish none → 2025-07-14 |
| 76 | Project Complete | baseline start none → 2025-07-14; baseline finish none → 2025-07-15 |

## Version 7 (saved 2023-04-23, file project case1.mpp)

Last finish stays 2025-07-15.

Changed:

| ID | Task | Other |
| --- | --- | --- |
| 6 | Develop preliminary architectural model | resources Cellphone2; Cellphone3; Cellphone11; Cellphone12; Laptop2; Laptop3; Laptop12; Laptop13; PDA2; PDA3; PDA8; PDA9; ProjectManager2; ProjectManager3; SystemAnalyst2; SystemAnalyst3 → Cellphone2; Cellphone3; Cellphone12; Laptop2; Laptop3; Laptop12; PDA2; PDA3; PDA9; ProjectManager2; ProjectManager3; SystemAnalyst3 |
| 11 | Develop initial descriptive budget | resources Cellphone6; Cellphone10; Cellphone11; FunctionalManager1; Laptop4; Laptop10; Laptop11; PDA7; PDA8; SystemAnalyst1; SystemAnalyst2 → Cellphone6; Cellphone10; FunctionalManager1; Laptop4; Laptop10; PDA7; SystemAnalyst1 |

## Version 8 (saved 2023-04-23, file project case2.mpp)

Last finish stays 2025-07-15.

Changed:

| ID | Task | Other |
| --- | --- | --- |
| 21 | Construction phase | resources Cellphone10; Desktop1; Desktop2; Desktop3; Developer1; Developer2; Developer3; Laptop10; PDA7; SystemAnalyst2 → Cellphone10; Desktop1; Desktop3; Developer1; Developer3; Laptop10; PDA7; SystemAnalyst2 |
| 29 | Construction phase | resources Cellphone10; Desktop1; Desktop2; Desktop3; Developer1; Developer2; Developer3; Laptop10; PDA7; SystemAnalyst2 → Cellphone10; Desktop1; Desktop3; Developer1; Developer3; Laptop10; PDA7; SystemAnalyst2 |

## Version 9 (saved 2023-04-23, file project case0.mpp)

Last finish stays 2025-07-15.

Changed:

| ID | Task | Other |
| --- | --- | --- |
| 6 | Develop preliminary architectural model | resources Cellphone2; Cellphone3; Cellphone12; Laptop2; Laptop3; Laptop12; PDA2; PDA3; PDA9; ProjectManager2; ProjectManager3; SystemAnalyst3 → Cellphone2; Cellphone3; Cellphone11; Cellphone12; Laptop2; Laptop3; Laptop12; Laptop13; PDA2; PDA3; PDA8; PDA9; ProjectManager2; ProjectManager3; SystemAnalyst2; SystemAnalyst3 |
| 11 | Develop initial descriptive budget | resources Cellphone6; Cellphone10; FunctionalManager1; Laptop4; Laptop10; PDA7; SystemAnalyst1 → Cellphone6; Cellphone10; Cellphone11; FunctionalManager1; Laptop4; Laptop10; Laptop11; PDA7; PDA8; SystemAnalyst1; SystemAnalyst2 |
| 21 | Construction phase | resources Cellphone10; Desktop1; Desktop3; Developer1; Developer3; Laptop10; PDA7; SystemAnalyst2 → Cellphone10; Desktop1; Desktop2; Desktop3; Developer1; Developer2; Developer3; Laptop10; PDA7; SystemAnalyst2 |
| 29 | Construction phase | resources Cellphone10; Desktop1; Desktop3; Developer1; Developer3; Laptop10; PDA7; SystemAnalyst2 → Cellphone10; Desktop1; Desktop2; Desktop3; Developer1; Developer2; Developer3; Laptop10; PDA7; SystemAnalyst2 |

## Version 10 (saved 2023-04-23, file project case3.mpp)

Last finish 2025-07-15 → 2025-07-17 (+2d). Complete tasks 23 → 19.

Changed:

| ID | Task | Start | Finish | Duration | Complete | Total float | Other |
| --- | --- | --- | --- | --- | --- | --- | --- |
| 1 | **ERP_Project_Team_13** |  | 2025-07-15 → 2025-07-17 (+2d) | 597.13d → 599.58d |  |  |  |
| 2 | **Project Initiation** |  | 2023-06-13 A → 2023-06-13 |  | 100% → 99% | none → 546.58d |  |
| 5 | Develop preliminary scope development |  | 2023-05-17 A → 2023-05-17 |  | 100% → 99% | none → 565.58d | resources Cellphone1; Cellphone2; Cellphone11; Cellphone12; Laptop1; Laptop2; Laptop11; Laptop12; PDA1; PDA2; PDA7; PDA8; ProjectManager1; ProjectManager2; SystemAnalyst1; SystemAnalyst2 → Cellphone1; Cellphone2; Cellphone11; Cellphone12; Laptop1; Laptop2; Laptop11; Laptop12; PDA1; PDA2; PDA7; PDA8; ProjectManager1; ProjectManager2; SystemAnalyst1; SystemAnalyst2; Desktop12; Developer12 |
| 17 | **Project Execution** |  | 2025-07-11 → 2025-07-15 (+4d) | 405.33d → 407.78d |  |  |  |
| 18 | **Release 1** |  | 2024-03-19 A → 2024-03-19 |  | 100% → 99% | none → 13d |  |
| 19 | Analysis phase |  | 2024-01-09 A → 2024-01-09 |  | 100% → 99% | none → 63d | resources Cellphone10; Desktop1; Desktop2; Desktop3; Developer1; Developer2; Developer3; Laptop10; PDA7; SystemAnalyst1 → Cellphone10; Desktop1; Desktop2; Desktop3; Developer1; Developer2; Developer3; Laptop10; PDA7; SystemAnalyst1; Desktop12; Developer12 |
| 22 | Validation phase |  | 2024-03-06 A → 2024-03-06 |  | 100% → 99% | none → 22d | resources Cellphone6; Desktop1; Desktop2; Desktop3; Developer1; Developer2; Developer3; FunctionalManager1; Laptop4; Cellphone4; Laptop7; PDA4; Tester1; Tester2; Cellphone5; Laptop8; PDA5 → Cellphone6; Desktop1; Desktop2; Desktop3; Developer1; Developer2; Developer3; FunctionalManager1; Laptop4; Cellphone4; Laptop7; PDA4; Tester1; Tester2; Cellphone5; Laptop8; PDA5; Cellphone13; Laptop16; PDA10; Tester3 |
| 26 | **Release 2** |  | 2024-06-19 → 2024-06-24 (+5d) | 66d → 68.45d | 69% → 71% |  |  |
| 27 | Analysis phase |  | 2024-04-05 A → 2024-04-05 |  | 100% → 99% | none → 55.45d | resources Cellphone10; Desktop1; Desktop2; Desktop3; Developer1; Developer2; Developer3; Laptop10; PDA7; SystemAnalyst1 → Cellphone10; Desktop1; Desktop2; Desktop3; Developer1; Developer2; Developer3; Laptop10; PDA7; SystemAnalyst1; Desktop12; Developer12 |
| 30 | Validation phase |  | 2024-06-04 → 2024-06-07 (+3d) | 13d → 11.68d | 29% → 32% |  | resources Cellphone6; Desktop1; Desktop2; Desktop3; Developer1; Developer2; Developer3; FunctionalManager1; Laptop4; Cellphone4; Laptop7; PDA4; Tester1; Tester2; Cellphone5; Laptop8; PDA5 → Cellphone6; Desktop1; Desktop2; Desktop3; Developer1; Developer2; Developer3; FunctionalManager1; Laptop4; Cellphone4; Laptop7; PDA4; Tester1; Tester2; Cellphone5; Laptop8; PDA5; Cellphone13; Laptop16; PDA10; Tester3 |
| 31 | Deployment phase | 2024-06-04 → 2024-06-07 (+3d) | 2024-06-17 → 2024-06-20 (+3d) |  |  |  |  |
| 32 | Closeout | 2024-06-17 → 2024-06-20 (+3d) | 2024-06-19 → 2024-06-24 (+5d) |  |  |  |  |
| 33 | Release 2 Complete | 2024-06-19 → 2024-06-24 (+5d) | 2024-06-19 → 2024-06-24 (+5d) |  |  |  |  |
| 34 | **Release 3** | 2024-06-19 → 2024-06-24 (+5d) | 2024-08-30 → 2024-09-03 (+4d) |  |  |  |  |
| 35 | Analysis phase | 2024-06-19 → 2024-06-24 (+5d) | 2024-07-09 → 2024-07-12 (+3d) |  |  |  |  |
| 36 | Design phase | 2024-07-09 → 2024-07-12 (+3d) | 2024-07-26 → 2024-07-31 (+5d) |  |  |  |  |
| 37 | Construction phase | 2024-07-26 → 2024-07-31 (+5d) | 2024-08-12 → 2024-08-15 (+3d) |  |  |  |  |
| 38 | Validation phase | 2024-08-12 → 2024-08-15 (+3d) | 2024-08-19 → 2024-08-21 (+2d) |  |  |  |  |
| 39 | Deployment phase | 2024-08-19 → 2024-08-21 (+2d) | 2024-08-27 → 2024-08-29 (+2d) |  |  |  |  |
| 40 | Closeout | 2024-08-27 → 2024-08-29 (+2d) | 2024-08-29 → 2024-09-02 (+4d) |  |  |  |  |
| 41 | Release 3 Complete | 2024-08-29 → 2024-09-02 (+4d) | 2024-08-30 → 2024-09-03 (+4d) |  |  |  |  |
| 42 | **Release 4** | 2024-08-30 → 2024-09-03 (+4d) | 2024-11-08 → 2024-11-13 (+5d) |  |  |  |  |
| 43 | Analysis phase | 2024-08-30 → 2024-09-03 (+4d) | 2024-09-20 → 2024-09-24 (+4d) |  |  |  |  |
| 44 | Design phase | 2024-09-20 → 2024-09-24 (+4d) | 2024-10-09 → 2024-10-11 (+2d) |  |  |  |  |
| 45 | Construction phase | 2024-10-09 → 2024-10-11 (+2d) | 2024-10-21 → 2024-10-23 (+2d) |  |  |  |  |
| 46 | Validation phase | 2024-10-21 → 2024-10-23 (+2d) | 2024-10-30 → 2024-11-04 (+5d) |  |  |  |  |
| 47 | Deployment phase | 2024-10-30 → 2024-11-04 (+5d) | 2024-11-06 → 2024-11-11 (+5d) |  |  |  |  |
| 48 | Closeout | 2024-11-06 → 2024-11-11 (+5d) | 2024-11-08 → 2024-11-13 (+5d) |  |  |  |  |
| 49 | Release 4 Complete | 2024-11-08 → 2024-11-13 (+5d) | 2024-11-08 → 2024-11-13 (+5d) |  |  |  |  |
| 50 | **Release 5** | 2024-11-08 → 2024-11-13 (+5d) | 2025-01-27 → 2025-01-29 (+2d) |  |  |  |  |
| 51 | Analysis phase | 2024-11-08 → 2024-11-13 (+5d) | 2024-11-26 → 2024-11-29 (+3d) |  |  |  |  |
| 52 | Design phase | 2024-11-26 → 2024-11-29 (+3d) | 2024-12-17 → 2024-12-20 (+3d) |  |  |  |  |
| 53 | Construction phase | 2024-12-17 → 2024-12-20 (+3d) | 2025-01-08 → 2025-01-13 (+5d) |  |  |  |  |
| 54 | Validation phase | 2025-01-08 → 2025-01-13 (+5d) | 2025-01-16 → 2025-01-20 (+4d) |  |  |  |  |
| 55 | Deployment phase | 2025-01-16 → 2025-01-20 (+4d) | 2025-01-22 → 2025-01-24 (+2d) |  |  |  |  |
| 56 | Closeout | 2025-01-22 → 2025-01-24 (+2d) | 2025-01-27 → 2025-01-29 (+2d) |  |  |  |  |
| 57 | Release 5 Complete | 2025-01-27 → 2025-01-29 (+2d) | 2025-01-27 → 2025-01-29 (+2d) |  |  |  |  |
| 58 | **Release 6** | 2025-01-27 → 2025-01-29 (+2d) | 2025-04-21 → 2025-04-23 (+2d) |  |  |  |  |
| 59 | Analysis phase | 2025-01-27 → 2025-01-29 (+2d) | 2025-02-19 → 2025-02-21 (+2d) |  |  |  |  |
| 60 | Design phase | 2025-02-19 → 2025-02-21 (+2d) | 2025-03-06 → 2025-03-10 (+4d) |  |  |  |  |
| 61 | Construction phase | 2025-03-06 → 2025-03-10 (+4d) | 2025-03-27 → 2025-03-31 (+4d) |  |  |  |  |
| 62 | Validation phase | 2025-03-27 → 2025-03-31 (+4d) | 2025-04-04 → 2025-04-08 (+4d) |  |  |  |  |
| 63 | Deployment phase | 2025-04-04 → 2025-04-08 (+4d) | 2025-04-15 → 2025-04-17 (+2d) |  |  |  |  |
| 64 | Closeout | 2025-04-15 → 2025-04-17 (+2d) | 2025-04-21 → 2025-04-23 (+2d) |  |  |  |  |
| 65 | Release 6 Complete | 2025-04-21 → 2025-04-23 (+2d) | 2025-04-21 → 2025-04-23 (+2d) |  |  |  |  |
| 66 | **Release 7** | 2025-04-21 → 2025-04-23 (+2d) | 2025-07-10 → 2025-07-14 (+4d) |  |  |  |  |
| 67 | Analysis phase | 2025-04-21 → 2025-04-23 (+2d) | 2025-05-08 → 2025-05-12 (+4d) |  |  |  |  |
| 68 | Design phase | 2025-05-08 → 2025-05-12 (+4d) | 2025-06-02 → 2025-06-04 (+2d) |  |  |  |  |
| 69 | Construction phase | 2025-06-02 → 2025-06-04 (+2d) | 2025-06-23 → 2025-06-25 (+2d) |  |  |  |  |
| 70 | Validation phase | 2025-06-23 → 2025-06-25 (+2d) | 2025-07-01 → 2025-07-03 (+2d) |  |  |  |  |
| 71 | Deployment phase | 2025-07-01 → 2025-07-03 (+2d) | 2025-07-07 → 2025-07-09 (+2d) |  |  |  |  |
| 72 | Closeout | 2025-07-07 → 2025-07-09 (+2d) | 2025-07-10 → 2025-07-14 (+4d) |  |  |  |  |
| 73 | Release 7 Complete | 2025-07-10 → 2025-07-14 (+4d) | 2025-07-10 → 2025-07-14 (+4d) |  |  |  |  |
| 74 | Execution complete | 2025-07-10 → 2025-07-14 (+4d) | 2025-07-11 → 2025-07-15 (+4d) |  |  |  |  |
| 75 | Project Closeout | 2025-07-11 → 2025-07-15 (+4d) | 2025-07-14 → 2025-07-16 (+2d) |  |  |  |  |
| 76 | Project Complete | 2025-07-14 → 2025-07-16 (+2d) | 2025-07-15 → 2025-07-17 (+2d) |  |  |  |  |

## Version 11 (saved 2023-04-23, file project case 4.mpp)

Last finish stays 2025-07-17. Complete tasks 19 → 17.

Changed:

| ID | Task | Finish | Complete | Total float | Other |
| --- | --- | --- | --- | --- | --- |
| 1 | **ERP_Project_Team_13** |  | 50% → 49% |  |  |
| 8 | **Project plan** | 2023-12-21 A → 2023-12-21 | 100% → 99% | none → 10.4d |  |
| 12 | Develop schedule | 2023-09-29 A → 2023-09-29 | 100% → 99% | none → 69.2d | resources Cellphone7; Cellphone11; Cellphone12; FunctionalManager2; Laptop5; Laptop11; Laptop12; PDA8; PDA9; SystemAnalyst2; SystemAnalyst3 → Cellphone7; Cellphone11; Cellphone12; FunctionalManager2; Laptop5; Laptop11; Laptop12; PDA8; PDA9; SystemAnalyst2; SystemAnalyst3; Cellphone15; Laptop18; PDA12; SystemAnalyst4 |
| 14 | Develop human resource plan | 2023-11-30 A → 2023-11-30 | 100% → 99% | none → 25.2d | resources Cellphone8; Cellphone10; Cellphone12; FunctionalManager3; Laptop6; Laptop10; Laptop12; PDA7; PDA9; SystemAnalyst1; SystemAnalyst3 → Cellphone8; Cellphone10; Cellphone12; FunctionalManager3; Laptop6; Laptop10; Laptop12; PDA7; PDA9; SystemAnalyst1; SystemAnalyst3; Cellphone15; Laptop18; PDA12; SystemAnalyst4 |
| 17 | **Project Execution** |  | 27% → 26% |  |  |
| 18 | **Release 1** |  | 99% → 96% | 13d → 10.4d |  |
| 19 | Analysis phase |  | 99% → 80% | 63d → 60.4d | resources Cellphone10; Desktop1; Desktop2; Desktop3; Developer1; Developer2; Developer3; Laptop10; PDA7; SystemAnalyst1; Desktop12; Developer12 → Cellphone10; Desktop1; Desktop2; Desktop3; Developer1; Developer2; Developer3; Laptop10; PDA7; SystemAnalyst1; Desktop12; Developer12; Cellphone14; Laptop17; PDA11; ProjectManager4 |
| 26 | **Release 2** |  | 71% → 67% |  |  |
| 27 | Analysis phase |  | 99% → 80% |  | resources Cellphone10; Desktop1; Desktop2; Desktop3; Developer1; Developer2; Developer3; Laptop10; PDA7; SystemAnalyst1; Desktop12; Developer12 → Cellphone10; Desktop1; Desktop2; Desktop3; Developer1; Developer2; Developer3; Laptop10; PDA7; SystemAnalyst1; Desktop12; Developer12; Cellphone14; Laptop17; PDA11; ProjectManager4 |
